# 软件估计书-V2.1

Schedule from MS Project, 2011-03-10 to 2011-06-07, costs in ￥, A marks actual dates.
南京轨道交通系统工程有限公司

## Calendars

- 标准: Mon-Fri 08:00-12:00, 13:00-17:00; Sat-Sun off.

## Resources

| Resource | Rate | Cost per use |
| --- | --- | --- |
| 设计人员 | 1 | 1 |
| 测试人员 | 1 | 1 |
| 外部专家 | 1 | 1 |
| 编码人员 | 1 | 1 |
| 项目经理 | 1 |  |
| SQA | 1 |  |
| 专家 | 1 |  |
| SCM | 1 |  |
| 测试负责人 | 1 |  |
| 需求人员 | 1 |  |
| CCB | 1 |  |
| SM | 1 |  |
| 项目组 | 1 |  |

## Schedule

| ID | WBS | Task | Duration | Start | Finish | Predecessors | Complete | Remaining | Baseline start | Baseline finish | Baseline duration | Total slack | Free slack | Constraint | Resources | Work | Actual work | Cost | Baseline cost | Actual cost | Text5 | Text8 | Text21 | Text22 | Text29 |
| --- | --- | --- | --- | --- | --- | --- | --- | --- | --- | --- | --- | --- | --- | --- | --- | --- | --- | --- | --- | --- | --- | --- | --- | --- | --- |
| 1 | 1 | **项目总体任务** | 63.19d? | 2011-03-10 08:00 A | 2011-06-07 09:31 |  | 2% | 61.99d? | 2004-05-10 08:00 | 2004-08-13 10:11 | 69.27d? | 0d |  |  |  | 1415h | 35h | 1,432.5 | 1,453.5 | 34 |  |  |  |  |  |
| 2 | 1.1 | **项目策划** | 47.17d? | 2011-03-10 08:00 A | 2011-05-16 09:21 |  | 17% | 39.32d? | 2004-05-10 14:00 | 2004-07-13 14:21 | 46.04d? | 16.02d |  |  |  | 257h | 35h | 245.5 | 245.5 | 34 |  |  |  |  |  |
| 3 | 1.1.1 | 项目立项 | 0.5d | 2011-03-10 08:00 | 2011-03-10 15:00 |  |  |  | 2004-05-21 11:00 | 2004-05-24 09:00 | 0.5d | 62.44d |  | start no earlier than 2011-03-10 08:00 | 项目经理 | 4h |  | 3.5 | 3.5 |  | A项目参考 | 需要中心批准 | 立项报告 | A项目参考 |  |
| 4 | 1.1.2 | 定义需求开发过程 | 0.88d? | 2011-03-12 08:00 A | 2011-03-14 16:00 A | 3 | 100% |  | 2004-05-10 14:00 | 2004-05-11 12:00 | 0.88d? |  |  |  | 项目经理 | 7h | 7h | 7 | 7 | 7 |  | 本项目需求开发超过2周。 | 需求开发计划 |  |  |
| 5 | 1.1.3 | 制订需求开发计划 | 1d? | 2011-03-13 08:00 A | 2011-03-14 17:00 A | 4 | 100% |  | 2004-05-11 13:00 | 2004-05-12 12:00 | 1d? |  |  |  | 项目经理 | 8h | 8h | 7 | 7 | 7 |  | 本项目需求开发超过2周，需要制定计划 | 需求开发计划 |  |  |
| 6 | 1.1.4 | 项目团队建立 | 2.5d? | 2011-03-15 08:00 A | 2011-03-17 12:00 A | 3 | 100% |  | 2004-05-12 13:00 | 2004-05-14 17:00 | 2.5d? |  |  |  | 项目经理 | 20h | 20h | 20 | 20 | 20 |  | 初期只建立RM人员 | SDP |  |  |
| 7 | 1.1.5 | 项目策划培训 | 1d? | 2011-03-17 13:00 | 2011-03-18 12:00 | 6 |  |  | 2004-05-17 08:00 | 2004-05-17 17:00 | 1d? | 54.19d | 0d |  |  | 10h |  |  |  |  |  |  |  |  |  |
| 8 | 1.1.6 | 项目软件生命周期模型选择 | 1.5d? | 2011-03-18 13:00 | 2011-03-22 17:00 | 7 |  |  | 2004-05-18 08:00 | 2004-05-20 12:00 | 1.5d? | 54.19d |  |  | 项目经理; SQA | 16h |  | 16 | 16 |  |  | 本项目选择瀑布型 | SDP |  |  |
| 9 | 1.1.7 | 定义项目的软件过程 | 1d? | 2011-03-30 09:21 | 2011-03-31 09:21 | 32 |  |  | 2004-05-27 14:21 | 2004-05-28 14:21 | 1d? | 14.65d | 0d |  | 项目经理; SQA | 16h |  | 16 | 16 |  |  | 本项目按照研发项目定义，项目任务紧，团队能力高 | 项目软件过程定义 |  |  |
| 10 | 1.1.8 | 技术任务WBS拆分 | 1d? | 2011-03-31 09:21 | 2011-04-04 09:21 | 9 |  |  | 2004-05-28 14:21 | 2004-06-01 14:21 | 1d? | 14.65d | 0d |  | 项目经理 | 8h |  | 8 | 8 |  |  |  | WBS |  |  |
| 11 | 1.1.9 | 管理任务WBS拆分 | 1d? | 2011-04-04 09:21 | 2011-04-05 13:01 | 10 |  |  | 2004-06-01 14:21 | 2004-06-03 08:01 | 1d? | 14.65d | 0d |  | 项目经理 | 8h |  | 8 | 8 |  |  |  | WBS |  |  |
| 12 | 1.1.10 | 制定估计策略 | 1d? | 2011-04-05 13:01 | 2011-04-06 15:01 | 11 |  |  | 2004-06-03 08:01 | 2004-06-04 10:01 | 1d? | 14.65d | 0d |  | 项目经理 | 8h |  | 8 | 8 |  |  | 工作量是工时。 | SDP |  |  |
| 13 | 1.1.11 | 技术任务规模估计 | 0.33d? | 2011-04-06 15:01 | 2011-04-07 08:41 | 12 |  |  | 2004-06-04 10:01 | 2004-06-04 13:41 | 0.33d? | 14.65d | 0d |  | 项目经理; SQA; 专家 | 8h |  | 8 | 8 |  |  | 维护类可以不估计 | 估计表 |  |  |
| 14 | 1.1.12 | 技术任务工作量估计 | 1.59d? | 2011-04-07 08:41 | 2011-04-11 10:41 | 13 |  |  | 2004-06-04 13:41 | 2004-06-08 15:41 | 1.59d? | 14.65d | 0d |  | 项目经理; SQA; 专家 | 24h |  | 24 | 24 |  |  |  | 估计表 |  |  |
| 15 | 1.1.13 | 关键计算机资源估计 | 1d? | 2011-04-11 10:41 | 2011-04-12 10:41 | 14 |  |  | 2004-06-08 15:41 | 2004-06-09 15:41 | 1d? | 14.65d | 0d |  | 项目经理; SQA | 16h |  | 16 | 16 |  |  |  |  |  |  |
| 16 | 1.1.14 | 工程设备和支持工具估计 | 1d? | 2011-04-12 10:41 | 2011-04-13 10:41 | 15 |  |  | 2004-06-09 15:41 | 2004-06-10 15:41 | 1d? | 14.65d | 0d |  | 项目经理; SQA | 16h |  | 16 | 16 |  |  |  |  |  |  |
| 17 | 1.1.15 | 制定风险管理计划 | 1d? | 2011-04-13 10:41 | 2011-04-15 13:41 | 16 |  |  | 2004-06-10 15:41 | 2004-06-15 08:41 | 1d? | 14.65d | 0d |  | 项目经理 | 8h |  | 8 | 8 |  |  |  | 风险管理计划 |  |  |
| 18 | 1.1.16 | 制定同行评审计划 | 1d? | 2011-04-15 13:41 | 2011-04-19 15:41 | 17 |  |  | 2004-06-15 08:41 | 2004-06-17 10:41 | 1d? | 14.65d | 0d |  | 项目经理 | 8h |  | 8 | 8 |  |  |  | SDP |  |  |
| 19 | 1.1.17 | 制定培训计划 | 1d? | 2011-04-19 15:41 | 2011-04-21 09:41 | 18 |  |  | 2004-06-17 10:41 | 2004-06-18 14:41 | 1d? | 14.65d | 0d |  | 项目经理 | 8h |  | 8 | 8 |  |  | 主要进行CMM3过程内容的培训。 | 培训计划 |  |  |
| 20 | 1.1.18 | 明细任务日程安排 | 1d? | 2011-04-21 09:41 | 2011-04-25 09:41 | 19 |  |  | 2004-06-18 14:41 | 2004-06-22 14:41 | 1d? | 14.65d | 0d |  | 项目经理 | 8h |  | 8 | 8 |  |  |  | 软件估计书 |  |  |
| 21 | 1.1.19 | 制定配置管理计划 | 1d? | 2011-04-25 09:41 | 2011-04-26 09:41 | 20 |  |  | 2004-06-22 14:41 | 2004-06-23 14:41 | 1d? | 14.65d | 0d |  | SCM | 8h |  | 8 | 8 |  |  |  | 配置管理计划 |  |  |
| 22 | 1.1.20 | 制定测试计划 | 1d? | 2011-04-26 09:41 | 2011-04-27 09:41 | 21 |  |  | 2004-06-23 14:41 | 2004-06-24 14:41 | 1d? | 14.65d | 0d |  | 测试负责人 | 8h |  | 8 | 8 |  |  |  | 软件测试计划 |  |  |
| 23 | 1.1.21 | 制定质量保证计划 | 1d? | 2011-04-27 09:41 | 2011-04-28 09:41 | 22 |  |  | 2004-06-24 14:41 | 2004-06-25 14:41 | 1d? | 14.65d | 0d |  | SQA | 8h |  | 8 | 8 |  |  |  | 软件质量保证计划 |  |  |
| 24 | 1.1.22 | 制定项目度量收集计划 | 1d? | 2011-04-28 10:11 | 2011-05-10 08:34 | 23 |  |  | 2004-06-25 15:11 | 2004-07-07 13:34 | 1d? | 14.65d | 0d |  | 项目经理 | 8h |  | 8 | 8 |  |  |  | 项目级软件度量收集计划 |  |  |
| 25 | 1.1.23 | 制定组间协调计划 | 1d? | 2011-05-10 08:34 | 2011-05-11 08:34 | 24 |  |  | 2004-07-07 13:34 | 2004-07-08 13:34 | 1d? | 14.65d | 0d |  | 项目经理 | 8h |  | 8 | 8 |  |  |  | 组间协调计划 |  |  |
| 26 | 1.1.24 | 计划评审 | 1d? | 2011-05-12 09:21 | 2011-05-13 09:21 | 25 |  |  | 2004-07-09 14:21 | 2004-07-12 14:21 | 1d? | 14.65d | 0d |  | 项目经理 | 8h |  | 8 | 8 |  |  | 中心正式评审，中心批准。 | 评审准备表和报告 |  | ܁$ |
| 27 | 1.1.25 | 计划返工 | 1d? | 2011-05-13 09:21 | 2011-05-16 09:21 | 26 |  |  | 2004-07-12 14:21 | 2004-07-13 14:21 | 1d? | 14.65d | 0d |  | 项目经理 | 8h |  | 8 | 8 |  |  |  |  |  | ܁# |

Notes:
- 1: WBS活动的裁剪，按照缺省原则执行。
- 7: 培训内容与参加的人数有关，注意工时的估计

| ID | WBS | Task | Duration | Start | Finish | Predecessors | Baseline start | Baseline finish | Baseline duration | Total slack | Free slack | Constraint | Deadline | Resources | Work | Cost | Baseline cost | Text8 | Text21 | Text3 | Text28 | Text29 |
| --- | --- | --- | --- | --- | --- | --- | --- | --- | --- | --- | --- | --- | --- | --- | --- | --- | --- | --- | --- | --- | --- | --- |
| 28 | 1.2 | **需求阶段任务** | 29.88d? | 2011-03-15 08:00 | 2011-04-25 16:00 |  | 2004-05-10 09:00 | 2004-05-27 17:00 | 13.88d? | -770.62d | 0d |  |  |  | 111h | 109 | 109 |  |  |  |  |  |
| 29 | 1.2.1 | 需求收集活动 | 10h | 2011-03-15 08:00 | 2011-03-16 10:00 | 5 | 2004-05-12 13:00 | 2004-05-13 15:00 | 10h | -770.62d | 0d | start no earlier than 2008-04-01 08:00 |  | 需求人员 | 10h | 10 | 10 | 客户需求调研 | 客户需求说明书 |  |  |  |
| 30 | 1.2.2 | 需求分析活动 | 5d? | 2011-03-16 10:00 | 2011-03-23 10:00 | 29 | 2004-05-13 15:00 | 2004-05-20 15:00 | 5d? | -770.62d | 0d |  |  | 需求人员 | 40h | 38 | 38 |  | 软件需求规格说明书 |  |  |  |
| 31 | 1.2.3 | 需求同行评审 | 4.38d? | 2011-03-23 10:00 | 2011-03-29 14:00 | 30 | 2004-05-20 15:00 | 2004-05-27 09:00 | 4.38d? | -770.62d | 0d |  | 2008-04-15 17:00 | CCB | 35h | 35 | 35 |  | 评审准备表和报告 | 10 | 10 | ܁$ |
| 32 | 1.2.4 | 需求问题返工 | 0.38d? | 2011-03-29 14:00 | 2011-03-30 09:21 | 31 | 2004-05-27 09:00 | 2004-05-27 14:21 | 0.38d? | 14.65d | 0d |  |  | 需求人员 | 3h | 3 | 3 |  |  |  |  | ܁# |
| 33 | 1.2.5 | 需求功能矩阵建立 | 0.88d? | 2011-03-29 14:00 | 2011-03-30 12:00 | 31 | 2004-05-27 09:00 | 2004-05-27 17:00 | 0.88d? | 48.69d |  |  |  | 需求人员 | 7h | 7 | 7 | 维护类可以只建立需求和测试之间的矩阵。 | 需求功能矩阵表和变更表 |  |  | ܁" |
| 34 | 1.2.6 | 需求阶段度量数据收集 | 1d? | 2011-04-15 08:00 | 2011-04-25 16:00 |  | 2004-05-10 09:00 | 2004-05-18 17:00 | 1d? | 30.32d |  | start no earlier than 2011-04-15 08:00 |  | 项目经理 | 8h | 8 | 8 |  | 度量收集计划 |  |  | ܁% |
| 35 | 1.2.7 | 需求里程碑报告 | 1d? | 2011-04-21 08:00 | 2011-04-21 17:00 |  | 2004-05-21 10:00 | 2004-05-24 10:00 | 1d? | 32.19d |  | start no earlier than 2011-04-21 08:00 |  | 项目经理 | 8h | 8 | 8 | 本项目不进行 | 项目阶段报告 |  |  |  |
| 36 | 1.3 | **设计阶段任务** | 33.75d? | 2011-03-23 10:00 | 2011-05-09 17:00 |  | 2004-05-10 08:00 | 2004-07-12 15:17 | 45.79d? | 0d |  |  |  |  | 285h | 298 | 298 |  |  |  |  |  |
| 37 | 1.3.1 | 需求培训 | 1d? | 2011-03-25 08:00 | 2011-03-25 17:00 |  | 2004-05-10 08:00 | 2004-05-10 17:00 | 1d? | 42.44d | 0d | start no earlier than 2011-03-25 08:00 |  | 需求人员 | 8h | 8 | 8 |  | 培训记录 |  |  |  |
| 38 | 1.3.2 | 系统测试用例设计 | 2.5d? | 2011-03-23 10:00 | 2011-03-25 15:00 | 30 | 2004-05-20 15:00 | 2004-05-25 10:00 | 2.5d? | 49.44d | 0d | start no earlier than 2008-03-26 08:00 |  | 测试负责人 | 20h | 20 | 20 |  | 系统测试用例 |  |  |  |
| 39 | 1.3.3 | 系统测试方案编写 | 1.25d? | 2011-03-23 10:00 | 2011-03-24 12:00 | 30 | 2004-05-20 15:00 | 2004-05-21 17:00 | 1.25d? | 52.69d |  | start no earlier than 2008-03-27 08:00 |  | 测试负责人 | 10h | 10 | 10 |  | 系统测试方案 |  |  |  |
| 40 | 1.3.4 | 系统测试用例同行评审 | 1d? | 2011-03-25 15:00 | 2011-03-28 15:00 | 38 | 2004-05-25 10:00 | 2004-05-26 10:00 | 1d? | 49.44d | 0d |  |  | 测试负责人; 项目经理 | 16h | 16 | 16 |  | 评审准备表和报告 |  |  | ܁$ |
| 41 | 1.3.5 | 系统测试用例返工 | 1d? | 2011-03-28 15:00 | 2011-03-29 15:00 | 40 | 2004-05-26 10:00 | 2004-05-27 10:00 | 1d? | 49.44d |  |  |  | 测试人员 | 8h | 9 | 9 |  |  |  |  | ܁# |
| 42 | 1.3.6 | 概要设计1任务 | 1.25d? | 2011-03-23 10:00 | 2011-03-24 12:00 | 30 | 2004-05-20 15:00 | 2004-05-21 17:00 | 1.25d? | 0d |  | start no earlier than 2008-03-31 08:00 |  | 设计人员; 测试人员 | 20h | 22 | 22 |  | 概要设计说明书 | 20 | 20 |  |
| 43 | 1.3.7 | 概要设计2任务 | 1.25d? | 2011-03-24 13:00 | 2011-03-30 14:56 | 42 | 2004-05-24 08:00 | 2004-05-28 09:56 | 1.25d? | 0d |  |  |  | 外部专家; 编码人员 | 10h | 12 | 12 |  |  | 23 | 23 |  |
| 44 | 1.3.8 | 概要设计同行评审 | 0.5d? | 2011-03-30 14:56 | 2011-03-31 09:56 | 43 | 2004-05-28 09:56 | 2004-05-28 14:56 | 0.5d? | 0d |  |  |  | 设计人员; 项目经理 | 8h | 9 | 9 |  | 评审准备表和报告 |  |  | ܁$ |
| 45 | 1.3.9 | 概要设计返工 | 1d? | 2011-03-31 09:56 | 2011-04-01 09:56 | 44 | 2004-05-28 14:56 | 2004-05-31 14:56 | 1d? | 0d |  |  |  | 设计人员 | 8h | 9 | 9 |  |  |  |  | ܁# |
| 46 | 1.3.10 | 集成测试用例设计 | 1.88d? | 2011-04-01 09:56 | 2011-04-05 08:56 | 45 | 2004-05-31 14:56 | 2004-06-02 13:56 | 1.88d? | 0d |  |  |  | 测试人员 | 15h | 16 | 16 |  | 测试用例 |  |  |  |
| 47 | 1.3.11 | 集成测试用例项目评审 | 0.33d? | 2011-04-05 08:56 | 2011-04-05 11:36 | 46 | 2004-06-02 13:56 | 2004-06-02 16:36 | 0.33d? | 0d |  |  |  | 测试人员; 测试负责人; 项目经理 | 8h | 9 | 9 |  | 评审准备表和报告 |  |  | ܁$ |
| 48 | 1.3.12 | 集成测试用例返工 | 1d? | 2011-04-05 11:36 | 2011-04-06 11:36 | 47 | 2004-06-02 16:36 | 2004-06-03 16:36 | 1d? | 0d |  |  |  | 测试人员 | 8h | 9 | 9 |  |  |  |  | ܁# |
| 49 | 1.3.13 | 详细设计1任务 | 2.5d? | 2011-04-06 11:36 | 2011-04-08 16:36 | 48 | 2004-06-03 16:36 | 2004-06-08 11:36 | 2.5d? | 0d |  |  |  | 设计人员 | 20h | 21 | 21 |  | 详细设计说明书 | 60 | 60 |  |
| 50 | 1.3.14 | 详细设计2任务 | 3.75d? | 2011-04-08 16:36 | 2011-04-14 14:36 | 49 | 2004-06-08 11:36 | 2004-06-14 09:36 | 3.75d? | 37.49d |  |  |  | 设计人员 | 30h | 31 | 31 |  |  | 68 | 68 |  |
| 51 | 1.3.15 | 详细设计走查 | 1d? | 2011-04-11 15:00 | 2011-04-15 15:00 | 48, 49 | 2004-06-11 10:00 | 2004-06-17 10:00 | 1d? | 18.25d | 0d |  |  | 项目经理 | 8h | 8 | 8 |  |  |  |  | ܁$ |
| 52 | 1.3.16 | 详细设计返工 | 1d? | 2011-04-15 15:00 | 2011-04-18 15:00 | 51 | 2004-06-17 10:00 | 2004-06-18 10:00 | 1d? | 18.25d | 0d |  |  | 设计人员 | 8h | 9 | 9 |  |  |  |  | ܁# |
| 53 | 1.3.17 | 设计阶段需求功能矩阵跟踪 | 1d? | 2011-04-18 15:00 | 2011-04-19 15:00 | 52 | 2004-06-18 10:00 | 2004-06-21 10:00 | 1d? | 21.25d | 1.25d |  |  | 需求人员 | 8h | 8 | 8 |  | 需求功能矩阵变更表 |  |  | ܁" |
| 54 | 1.3.18 | 设计阶段度量数据收集 | 1d? | 2011-05-09 08:00 | 2011-05-09 17:00 | 53 | 2004-07-09 15:17 | 2004-07-12 15:17 | 1d? | 20.19d |  |  |  | 项目经理 | 8h | 8 | 8 |  | 度量收集计划 |  |  | ܁% |
| 55 | 1.3.19 | 用户操作手册编写 | 1d? | 2011-04-06 13:00 | 2011-04-07 15:00 | 37 | 2004-05-20 13:00 | 2004-05-21 15:00 | 1d? | 42.44d |  |  |  | 项目经理 | 8h | 8 | 8 |  | 操作手册 |  |  |  |
| 56 | 1.3.20 | 用户安装手册编写 | 1d? | 2011-04-05 08:00 | 2011-04-06 17:00 | 45 | 2004-06-04 10:00 | 2004-06-08 10:00 | 1d? | 43.19d |  |  |  | 项目经理 | 8h | 8 | 8 |  | 安装手册 |  |  |  |
| 57 | 1.3.21 | 用户维护手册编写 | 1d? | 2011-04-19 08:00 | 2011-04-21 14:41 | 52 | 2004-06-18 14:41 | 2004-06-23 11:23 | 1d? | 26.73d | 0d |  |  | 项目经理 | 8h | 8 | 8 |  | 维护手册 |  |  |  |
| 58 | 1.3.22 | 设计里程碑报告 | 5d? | 2011-04-19 08:00 | 2011-04-29 14:23 | 52 | 2004-06-18 14:41 | 2004-07-01 11:05 | 5d? | 26.52d |  |  |  | 项目经理 | 40h | 40 | 40 |  | 里程碑报告 |  |  |  |

| ID | WBS | Task | Duration | Start | Finish | Predecessors | Baseline start | Baseline finish | Baseline duration | Total slack | Free slack | Constraint | Resources | Work | Cost | Baseline cost | Text21 | Text3 | Text28 | Text29 | Text4 | Text27 |
| --- | --- | --- | --- | --- | --- | --- | --- | --- | --- | --- | --- | --- | --- | --- | --- | --- | --- | --- | --- | --- | --- | --- |
| 59 | 1.4 | **编码和单元测试任务** | 24.87d? | 2011-04-08 16:36 | 2011-05-13 15:31 |  | 2004-06-08 11:36 | 2004-07-15 10:31 | 26.87d? | 0d |  |  |  | 258h | 268 | 268 |  |  |  |  |  |  |
| 60 | 1.4.1 | 设计培训 | 1d? | 2011-04-18 15:00 | 2011-04-19 15:00 | 52 | 2004-06-18 10:00 | 2004-06-21 10:00 | 1d? | 18.25d | 0d | start no earlier than 2008-03-24 08:00 | 设计人员 | 8h | 9 | 9 | 培训记录 |  |  |  |  |  |
| 61 | 1.4.2 | 编码培训 | 1d? | 2011-05-12 15:31 | 2011-05-13 15:31 | 60 | 2004-07-14 10:31 | 2004-07-15 10:31 | 1d? | 16.38d |  |  | 项目经理 | 8h | 8 | 8 | 培训记录 |  |  |  |  |  |
| 62 | 1.4.3 | 单元测试用例设计 | 3.75d? | 2011-04-21 14:41 | 2011-04-27 11:41 | 49, 57 | 2004-06-23 11:23 | 2004-06-29 09:23 | 3.75d? | 26.73d | 0d | start no earlier than 2008-04-20 08:00 | 测试人员 | 30h | 31 | 31 | 测试用例 | 100 | 100 |  |  |  |
| 63 | 1.4.4 | 单元测试用例非正式评审 | 1d? | 2011-04-27 11:41 | 2011-04-28 11:41 | 62 | 2004-06-29 09:23 | 2004-06-30 09:23 | 1d? | 26.73d | 0d |  | 测试负责人 | 8h | 8 | 8 |  |  |  | ܁$ |  |  |
| 64 | 1.4.5 | 单元测试用例返工 | 1d? | 2011-04-28 11:41 | 2011-04-29 11:41 | 63 | 2004-06-30 09:23 | 2004-07-01 09:23 | 1d? | 26.73d |  |  | 测试人员 | 8h | 9 | 9 |  |  |  | ܁# |  |  |
| 65 | 1.4.6 | 编码1任务 | 2.5d? | 2011-04-08 16:36 | 2011-04-13 11:36 | 49 | 2004-06-08 11:36 | 2004-06-10 16:36 | 2.5d? | 0d |  | start no earlier than 2008-04-28 08:00 | 编码人员 | 20h | 21 | 21 | 编码1 | 1000 | 1000 | ܁ | LOC | LOC |
| 66 | 1.4.7 | 编码2任务 | 1.88d? | 2011-04-13 11:36 | 2011-04-15 10:36 | 65 | 2004-06-10 16:36 | 2004-06-14 15:36 | 1.88d? | 20.67d | 0d | start no earlier than 2008-04-28 08:00 | 编码人员 | 15h | 16 | 16 | 编码2 | 700 | 700 | ܁ | LOC | LOC |
| 67 | 1.4.8 | 编码3任务 | 3.75d? | 2011-04-15 10:36 | 2011-04-21 08:36 | 66 | 2004-06-14 15:36 | 2004-06-18 13:36 | 3.75d? | 30.62d | 0d |  | 编码人员 | 30h | 31 | 31 | 编码3 | 1300 | 1300 | ܁ | LOC | LOC |
| 68 | 1.4.9 | 编码4任务 | 2.5d? | 2011-04-21 08:36 | 2011-04-25 13:36 | 67 | 2004-06-18 13:36 | 2004-06-23 08:36 | 2.5d? | 30.62d |  |  | 编码人员 | 20h | 21 | 21 | 编码4 | 1100 | 1100 | ܁ | LOC | LOC |
| 69 | 1.4.10 | 编码走查 | 1d? | 2011-04-19 10:11 | 2011-05-09 08:45 | 66 | 2004-06-18 15:11 | 2004-07-08 13:45 | 1d? | 21.1d |  |  | 项目经理 | 8h | 8 | 8 |  |  |  | ܁$ |  |  |
| 70 | 1.4.11 | 单元测试1 | 2.5d? | 2011-04-13 11:36 | 2011-04-15 16:36 | 65 | 2004-06-10 16:36 | 2004-06-15 11:36 | 2.5d? | 0d |  |  | 测试人员 | 20h | 21 | 21 | 测试记录 |  |  |  |  |  |
| 71 | 1.4.12 | 单元测试2 | 4.38d? | 2011-04-15 16:36 | 2011-04-22 10:36 | 70 | 2004-06-15 11:36 | 2004-06-21 15:36 | 4.38d? | 0d |  |  | 测试人员 | 35h | 36 | 36 | 测试记录 |  |  |  |  |  |
| 72 | 1.4.13 | 用户文档评审 | 1d? | 2011-04-26 09:41 | 2011-05-05 08:10 | 71 | 2004-06-25 14:41 | 2004-07-06 13:10 | 1d? | 0d |  |  | 项目经理 | 8h | 8 | 8 | 评审准备表和报告 |  |  | ܁$ |  |  |
| 73 | 1.4.14 | 用户文档返工 | 1d? | 2011-05-05 08:10 | 2011-05-10 14:31 | 72 | 2004-07-06 13:10 | 2004-07-12 09:31 | 1d? | 0d |  |  | 项目经理 | 8h | 8 | 8 |  |  |  | ܁# |  |  |
| 74 | 1.4.15 | 单元测试编码返工 | 1d? | 2011-04-22 10:36 | 2011-04-25 10:36 | 70, 71 | 2004-06-21 15:36 | 2004-06-22 15:36 | 1d? | 18.67d | 0d |  | 编码人员 | 8h | 9 | 9 |  |  |  | ܁# |  |  |
| 75 | 1.4.16 | 需求功能矩阵跟踪 | 1d? | 2011-04-25 10:36 | 2011-04-26 10:36 | 74 | 2004-06-22 15:36 | 2004-06-23 15:36 | 1d? | 18.67d | 0d |  | 需求人员 | 8h | 8 | 8 | 变更表 |  |  | ܁" |  |  |
| 76 | 1.4.17 | 编码阶段度量数据收集 | 1d? | 2011-05-05 10:17 | 2011-05-12 09:21 | 75 | 2004-07-02 15:17 | 2004-07-09 14:21 | 1d? | 17.02d | 0d |  | 项目经理 | 8h | 8 | 8 | 度量收集计划 |  |  | ܁% |  |  |
| 77 | 1.4.18 | 编码里程碑报告 | 1d? | 2011-05-12 09:21 | 2011-05-13 09:21 | 76 | 2004-07-09 14:21 | 2004-07-12 14:21 | 1d? | 17.02d |  |  | 项目经理 | 8h | 8 | 8 | 里程碑报告 |  |  |  |  |  |
| 78 | 1.5 | **测试阶段任务** | 19.5d? | 2011-05-10 14:31 | 2011-06-07 09:31 |  | 2004-07-12 09:31 | 2004-08-06 14:31 | 19.5d? | 0d |  |  |  | 166h | 172 | 172 |  |  |  |  |  |  |
| 79 | 1.5.1 | 集成测试培训 | 1d? | 2011-05-10 14:31 | 2011-05-11 14:31 | 73 | 2004-07-12 09:31 | 2004-07-13 09:31 | 1d? | 0d |  | start no earlier than 2008-04-06 08:00 | 测试负责人 | 8h | 8 | 8 | 培训记录 |  |  |  |  |  |
| 80 | 1.5.2 | 集成测试任务 | 6.25d? | 2011-05-11 14:31 | 2011-05-19 16:31 | 79 | 2004-07-13 09:31 | 2004-07-21 11:31 | 6.25d? | 0d |  |  | 测试人员 | 50h | 51 | 51 |  |  |  |  |  |  |
| 81 | 1.5.3 | 集成测试报告编写 | 1.25d? | 2011-05-19 16:31 | 2011-05-23 09:31 | 80 | 2004-07-21 11:31 | 2004-07-22 14:31 | 1.25d? | 11d |  |  | 测试人员 | 10h | 11 | 11 | 集成测试报告 |  |  |  |  |  |
| 82 | 1.5.4 | 集成测试编码返工 | 1d? | 2011-05-19 16:31 | 2011-05-20 16:31 | 80 | 2004-07-21 11:31 | 2004-07-22 11:31 | 1d? | 0d |  |  | 编码人员 | 8h | 9 | 9 |  |  |  | ܁# |  |  |
| 83 | 1.5.5 | 系统测试培训 | 1d? | 2011-05-20 16:31 | 2011-05-23 16:31 | 82 | 2004-07-22 11:31 | 2004-07-23 11:31 | 1d? | 0d |  |  | 测试负责人 | 8h | 8 | 8 | 培训记录 |  |  |  |  |  |
| 84 | 1.5.6 | 系统测试任务 | 5d? | 2011-05-23 16:31 | 2011-05-30 16:31 | 83 | 2004-07-23 11:31 | 2004-07-30 11:31 | 5d? | 0d |  |  | 测试人员 | 40h | 41 | 41 |  |  |  |  |  |  |
| 85 | 1.5.7 | 系统测试报告编写 | 1.25d? | 2011-05-30 16:31 | 2011-06-01 09:31 | 84 | 2004-07-30 11:31 | 2004-08-02 14:31 | 1.25d? | 0d |  |  | 测试人员 | 10h | 11 | 11 | 系统测试报告 |  |  |  |  |  |
| 86 | 1.5.8 | 系统测试编码返工 | 1d? | 2011-06-01 09:31 | 2011-06-02 09:31 | 85 | 2004-08-02 14:31 | 2004-08-03 14:31 | 1d? | 0d |  |  | 测试人员 | 8h | 9 | 9 |  |  |  | ܁# |  |  |
| 87 | 1.5.9 | 测试阶段需求功能矩阵跟踪 | 1d? | 2011-06-02 09:31 | 2011-06-03 09:31 | 86 | 2004-08-03 14:31 | 2004-08-04 14:31 | 1d? | 0d |  |  | 需求人员 | 8h | 8 | 8 | 变更表 |  |  | ܁" |  |  |
| 88 | 1.5.10 | 测试阶段度量数据收集 | 1d? | 2011-06-03 09:31 | 2011-06-06 09:31 | 87 | 2004-08-04 14:31 | 2004-08-05 14:31 | 1d? | 0d |  |  | 项目经理 | 8h | 8 | 8 | 度量收集计划 |  |  | ܁% |  |  |
| 89 | 1.5.11 | 测试里程碑报告 | 1d? | 2011-06-06 09:31 | 2011-06-07 09:31 | 88 | 2004-08-05 14:31 | 2004-08-06 14:31 | 1d? | 0d |  |  | 项目经理 | 8h | 8 | 8 | 里程碑报告 |  |  |  |  |  |

| ID | WBS | Task | Duration | Start | Finish | Predecessors | Baseline start | Baseline finish | Baseline duration | Total slack | Free slack | Constraint | Resources | Work | Cost | Baseline cost | Text21 | Text8 | Text29 |
| --- | --- | --- | --- | --- | --- | --- | --- | --- | --- | --- | --- | --- | --- | --- | --- | --- | --- | --- | --- |
| 90 | 1.6 | **验收阶段任务** | 4.58d? | 2011-05-06 08:00 | 2011-05-12 13:40 |  | 2004-08-06 14:31 | 2004-08-13 10:11 | 4.58d? | 17.61d |  |  |  | 50h | 51 | 51 |  |  |  |
| 91 | 1.6.1 | 项目试运行 | 0.83d? | 2011-05-06 08:00 | 2011-05-06 15:40 |  | 2004-08-06 14:31 | 2004-08-09 13:11 | 0.83d? | 17.61d | 0d | start no earlier than 2011-05-06 08:00 | 测试负责人; 编码人员; 项目经理 | 20h | 21 | 21 | 验收报告 |  |  |
| 92 | 1.6.2 | 项目总结 | 3.75d? | 2011-05-06 15:40 | 2011-05-12 13:40 | 91 | 2004-08-09 13:11 | 2004-08-13 10:11 | 3.75d? | 17.61d |  |  | 项目经理 | 30h | 30 | 30 | 项目总结报告 |  |  |
| 93 | 1.7 | **需求变更控制** | 46d | 2011-03-10 08:00 | 2011-05-12 17:00 |  | 2004-05-10 08:00 | 2004-07-12 17:00 | 46d | 17.19d |  |  |  | 24h | 24 | 24 | 变更请求表 | 每个月1次变更 |  |
| 94 | 1.7.1 | 需求变更控制 1 | 1d | 2011-03-10 08:00 | 2011-03-10 17:00 |  | 2004-05-10 08:00 | 2004-05-10 17:00 | 1d | 62.19d |  | start no earlier than 2011-03-10 08:00 | 需求人员 | 8h | 8 | 8 |  |  | ܁" |
| 95 | 1.7.2 | 需求变更控制 2 | 1d | 2011-04-08 08:00 | 2011-04-10 17:00 |  | 2004-06-10 08:00 | 2004-06-10 17:00 | 1d | 41.19d |  | finish no earlier than 2011-04-10 17:00 | 需求人员 | 8h | 8 | 8 |  |  | ܁" |
| 96 | 1.7.3 | 需求变更控制 3 | 1d | 2011-05-12 08:00 | 2011-05-12 17:00 |  | 2004-07-12 08:00 | 2004-07-12 17:00 | 1d | 17.19d |  | start no earlier than 2011-05-12 08:00 | 需求人员 | 8h | 8 | 8 |  |  | ܁" |
| 97 | 1.8 | **项目跟踪与监控活动** | 62d? | 2011-03-11 08:00 | 2011-06-06 17:00 |  | 2004-05-10 08:00 | 2004-07-26 17:00 | 56d? | 0.19d |  |  |  | 124h | 124 | 140 |  |  |  |
| 98 | 1.8.1 | **计划变更控制** | 46d | 2011-03-21 08:00 | 2011-05-23 17:00 |  | 2004-05-19 08:00 | 2004-07-21 17:00 | 46d | 10.19d |  |  |  | 24h | 24 | 24 | 变更请求表 | 每个月1次变更，预留 |  |
| 99 | 1.8.1.1 | 计划变更控制 1 | 1d | 2011-03-21 08:00 | 2011-03-21 17:00 |  | 2004-05-19 08:00 | 2004-05-19 17:00 | 1d | 55.19d |  | start no earlier than 2011-03-21 08:00 | 项目经理 | 8h | 8 | 8 |  |  |  |
| 100 | 1.8.1.2 | 计划变更控制 2 | 1d | 2011-04-18 08:00 | 2011-04-18 17:00 |  | 2004-06-16 08:00 | 2004-06-16 17:00 | 1d | 35.19d |  | start no earlier than 2011-04-18 08:00 | 项目经理 | 8h | 8 | 8 |  |  |  |
| 101 | 1.8.1.3 | 计划变更控制 3 | 1d | 2011-05-23 08:00 | 2011-05-23 17:00 |  | 2004-07-21 08:00 | 2004-07-21 17:00 | 1d | 10.19d |  | start no earlier than 2011-05-23 08:00 | 项目经理 | 8h | 8 | 8 |  |  |  |
| 102 | 1.8.2 | **周例会** | 61d | 2011-03-11 08:00 | 2011-06-03 17:00 |  | 2004-05-14 08:00 | 2004-07-23 17:00 | 51d | 1.19d |  |  |  | 20h | 20 | 20 | 项目会议纪要 | 与项目成员有关 |  |
| 103 | 1.8.2.1 | 周例会 1 | 0.25d | 2011-03-11 08:00 | 2011-03-11 10:00 |  | 2004-05-14 08:00 | 2004-05-14 10:00 | 0.25d | 61.94d |  | start no earlier than 2011-03-11 08:00 | 项目组; SQA | 4h | 4 | 4 |  |  |  |
| 104 | 1.8.2.2 | 周例会 2 | 0.25d | 2011-03-18 08:00 | 2011-03-18 10:00 |  | 2004-05-21 08:00 | 2004-05-21 10:00 | 0.25d | 56.94d |  | start no earlier than 2011-03-18 08:00 | 项目组; SQA | 4h | 4 | 4 |  |  |  |
| 105 | 1.8.2.3 | 周例会 3 | 0.25d | 2011-03-25 08:00 | 2011-03-25 10:00 |  | 2004-05-28 08:00 | 2004-05-28 10:00 | 0.25d | 51.94d |  | start no earlier than 2011-03-25 08:00 | 项目组; SQA | 4h | 4 | 4 |  |  |  |
| 106 | 1.8.2.4 | 周例会 4 | 0.25d | 2011-04-01 08:00 | 2011-04-01 10:00 |  | 2004-06-04 08:00 | 2004-06-04 10:00 | 0.25d | 46.94d |  | start no earlier than 2011-04-01 08:00 | 项目组; SQA | 4h | 4 | 4 |  |  |  |
| 107 | 1.8.2.5 | 周例会 5 | 0.25d | 2011-04-08 08:00 | 2011-04-08 10:00 |  | 2004-06-11 08:00 | 2004-06-11 10:00 | 0.25d | 41.94d |  | start no earlier than 2011-04-08 08:00 | 项目组; SQA | 4h | 4 | 4 |  |  |  |
| 108 | 1.8.2.6 | 周例会 6 | 1d | 2011-04-15 08:00 | 2011-04-15 17:00 |  | 2004-06-18 08:00 | 2004-06-18 17:00 | 1d | 36.19d |  | start no earlier than 2011-04-15 08:00 |  |  |  |  |  |  |  |
| 109 | 1.8.2.7 | 周例会 7 | 1d | 2011-04-22 08:00 | 2011-04-22 17:00 |  | 2004-06-25 08:00 | 2004-06-25 17:00 | 1d | 31.19d |  | start no earlier than 2011-04-22 08:00 |  |  |  |  |  |  |  |
| 110 | 1.8.2.8 | 周例会 8 | 1d | 2011-04-29 08:00 | 2011-04-29 17:00 |  | 2004-07-02 08:00 | 2004-07-02 17:00 | 1d | 26.19d |  | start no earlier than 2011-04-29 08:00 |  |  |  |  |  |  |  |
| 111 | 1.8.2.9 | 周例会 9 | 1d | 2011-05-06 08:00 | 2011-05-06 17:00 |  | 2004-07-09 08:00 | 2004-07-09 17:00 | 1d | 21.19d |  | start no earlier than 2011-05-06 08:00 |  |  |  |  |  |  |  |
| 112 | 1.8.2.10 | 周例会 10 | 1d | 2011-05-13 08:00 | 2011-05-13 17:00 |  | 2004-07-16 08:00 | 2004-07-16 17:00 | 1d | 16.19d |  | start no earlier than 2011-05-13 08:00 |  |  |  |  |  |  |  |
| 113 | 1.8.2.11 | 周例会 11 | 1d | 2011-05-20 08:00 | 2011-05-20 17:00 |  | 2004-07-23 08:00 | 2004-07-23 17:00 | 1d | 11.19d |  | start no earlier than 2011-05-20 08:00 |  |  |  |  |  |  |  |
| 114 | 1.8.2.12 | 周例会 12 | 1d | 2011-05-27 08:00 | 2011-05-27 17:00 |  |  |  |  | 6.19d |  | start no earlier than 2011-05-27 08:00 |  |  |  |  |  |  |  |
| 115 | 1.8.2.13 | 周例会 13 | 1d | 2011-06-03 08:00 | 2011-06-03 17:00 |  |  |  |  | 1.19d |  | start no earlier than 2011-06-03 08:00 |  |  |  |  |  |  |  |

Notes:
- 103: 每周例会。大约1个小时，计算参加人数即可。

| ID | WBS | Task | Duration | Start | Finish | Baseline start | Baseline finish | Baseline duration | Total slack | Constraint | Resources | Work | Cost | Baseline cost | Text8 | Text21 |
| --- | --- | --- | --- | --- | --- | --- | --- | --- | --- | --- | --- | --- | --- | --- | --- | --- |
| 116 | 1.8.3 | **项目周报编写** | 56d | 2011-03-11 08:00 | 2011-05-27 17:00 | 2004-05-14 08:00 | 2004-07-23 10:00 | 50.25d | 6.19d |  |  | 44h | 44 | 44 | 与项目成员有关 | 项目周报和成员周报 |
| 117 | 1.8.3.1 | 项目周报编写 1 | 0.25d | 2011-03-11 08:00 | 2011-03-11 10:00 | 2004-05-14 08:00 | 2004-05-14 10:00 | 0.25d | 61.94d | start no earlier than 2011-03-11 08:00 | 项目组; SQA | 4h | 4 | 4 |  |  |
| 118 | 1.8.3.2 | 项目周报编写 2 | 0.25d | 2011-03-18 08:00 | 2011-03-18 10:00 | 2004-05-21 08:00 | 2004-05-21 10:00 | 0.25d | 56.94d | start no earlier than 2011-03-18 08:00 | 项目组; SQA | 4h | 4 | 4 |  |  |
| 119 | 1.8.3.3 | 项目周报编写 3 | 0.25d | 2011-03-25 08:00 | 2011-03-25 10:00 | 2004-05-28 08:00 | 2004-05-28 10:00 | 0.25d | 51.94d | start no earlier than 2011-03-25 08:00 | 项目组; SQA | 4h | 4 | 4 |  |  |
| 120 | 1.8.3.4 | 项目周报编写 4 | 0.25d | 2011-04-01 08:00 | 2011-04-01 10:00 | 2004-06-04 08:00 | 2004-06-04 10:00 | 0.25d | 46.94d | start no earlier than 2011-04-01 08:00 | 项目组; SQA | 4h | 4 | 4 |  |  |
| 121 | 1.8.3.5 | 项目周报编写 5 | 0.25d | 2011-04-08 08:00 | 2011-04-08 10:00 | 2004-06-11 08:00 | 2004-06-11 10:00 | 0.25d | 41.94d | start no earlier than 2011-04-08 08:00 | 项目组; SQA | 4h | 4 | 4 |  |  |
| 122 | 1.8.3.6 | 项目周报编写 6 | 0.25d | 2011-04-15 08:00 | 2011-04-15 10:00 | 2004-06-18 08:00 | 2004-06-18 10:00 | 0.25d | 36.94d | start no earlier than 2011-04-15 08:00 | 项目组; SQA | 4h | 4 | 4 |  |  |
| 123 | 1.8.3.7 | 项目周报编写 7 | 0.25d | 2011-04-22 08:00 | 2011-04-22 10:00 | 2004-06-25 08:00 | 2004-06-25 10:00 | 0.25d | 31.94d | start no earlier than 2011-04-22 08:00 | 项目组; SQA | 4h | 4 | 4 |  |  |
| 124 | 1.8.3.8 | 项目周报编写 8 | 0.25d | 2011-04-29 08:00 | 2011-04-29 10:00 | 2004-07-02 08:00 | 2004-07-02 10:00 | 0.25d | 26.94d | start no earlier than 2011-04-29 08:00 | 项目组; SQA | 4h | 4 | 4 |  |  |
| 125 | 1.8.3.9 | 项目周报编写 9 | 0.25d | 2011-05-06 08:00 | 2011-05-06 10:00 | 2004-07-09 08:00 | 2004-07-09 10:00 | 0.25d | 21.94d | start no earlier than 2011-05-06 08:00 | 项目组; SQA | 4h | 4 | 4 |  |  |
| 126 | 1.8.3.10 | 项目周报编写 10 | 0.25d | 2011-05-13 08:00 | 2011-05-13 10:00 | 2004-07-16 08:00 | 2004-07-16 10:00 | 0.25d | 16.94d | start no earlier than 2011-05-13 08:00 | 项目组; SQA | 4h | 4 | 4 |  |  |
| 127 | 1.8.3.11 | 项目周报编写 11 | 0.25d | 2011-05-20 08:00 | 2011-05-20 10:00 | 2004-07-23 08:00 | 2004-07-23 10:00 | 0.25d | 11.94d | start no earlier than 2011-05-20 08:00 | 项目组; SQA | 4h | 4 | 4 |  |  |
| 128 | 1.8.3.12 | 项目周报编写 12 | 1d | 2011-05-27 08:00 | 2011-05-27 17:00 |  |  |  | 6.19d | start no earlier than 2011-05-27 08:00 |  |  |  |  |  |  |
| 129 | 1.8.4 | **任务单下发** | 16d | 2011-05-16 08:00 | 2011-06-06 17:00 | 2004-05-10 08:00 | 2004-07-26 17:00 | 56d | 0.19d |  |  | 4h | 4 | 11 |  | 任务单 |
| 130 | 1.8.4.1 | 任务单下发 1 | 0.12d | 2011-05-16 08:00 | 2011-05-16 09:00 | 2004-05-10 08:00 | 2004-05-10 09:00 | 0.12d | 16.07d | start no earlier than 2011-05-16 08:00 | 项目经理 | 1h | 1 | 1 |  |  |
| 131 | 1.8.4.2 | 任务单下发 2 | 1d | 2011-05-23 08:00 | 2011-05-23 17:00 | 2004-05-17 08:00 | 2004-05-17 17:00 | 1d | 10.19d | start no earlier than 2011-05-23 08:00 | 项目经理 [12.5%] | 1h | 1 | 1 |  |  |
| 132 | 1.8.4.3 | 任务单下发 3 | 1d | 2011-05-30 08:00 | 2011-05-30 17:00 | 2004-05-24 08:00 | 2004-05-24 17:00 | 1d | 5.19d | start no earlier than 2011-05-30 08:00 | 项目经理 [12.5%] | 1h | 1 | 1 |  |  |
| 133 | 1.8.4.4 | 任务单下发 4 | 1d | 2011-06-06 08:00 | 2011-06-06 17:00 | 2004-05-31 08:00 | 2004-05-31 17:00 | 1d | 0.19d | start no earlier than 2011-06-06 08:00 | 项目经理 [12.5%] | 1h | 1 | 1 |  |  |
| 134 | 1.8.5 | **项目问题和风险管理** | 40.25d | 2011-03-25 08:00 | 2011-05-20 10:00 | 2004-05-14 08:00 | 2004-07-23 10:00 | 50.25d | 11.94d |  |  | 18h | 18 | 22 |  | 项目问题日志和风险减缓日志 |
| 135 | 1.8.5.1 | 项目问题和风险管理 1 | 0.25d | 2011-03-25 08:00 | 2011-03-25 10:00 | 2004-05-14 08:00 | 2004-05-14 10:00 | 0.25d | 51.94d | start no earlier than 2011-03-25 08:00 | 项目经理 | 2h | 2 | 2 |  |  |
| 136 | 1.8.5.2 | 项目问题和风险管理 2 | 0.25d | 2011-04-01 08:00 | 2011-04-01 10:00 | 2004-05-21 08:00 | 2004-05-21 10:00 | 0.25d | 46.94d | start no earlier than 2011-04-01 08:00 | 项目经理 | 2h | 2 | 2 |  |  |
| 137 | 1.8.5.3 | 项目问题和风险管理 3 | 0.25d | 2011-04-08 08:00 | 2011-04-08 10:00 | 2004-05-28 08:00 | 2004-05-28 10:00 | 0.25d | 41.94d | start no earlier than 2011-04-08 08:00 | 项目经理 | 2h | 2 | 2 |  |  |
| 138 | 1.8.5.4 | 项目问题和风险管理 4 | 0.25d | 2011-04-15 08:00 | 2011-04-15 10:00 | 2004-06-04 08:00 | 2004-06-04 10:00 | 0.25d | 36.94d | start no earlier than 2011-04-15 08:00 | 项目经理 | 2h | 2 | 2 |  |  |
| 139 | 1.8.5.5 | 项目问题和风险管理 5 | 0.25d | 2011-04-22 08:00 | 2011-04-22 10:00 | 2004-06-11 08:00 | 2004-06-11 10:00 | 0.25d | 31.94d | start no earlier than 2011-04-22 08:00 | 项目经理 | 2h | 2 | 2 |  |  |
| 140 | 1.8.5.6 | 项目问题和风险管理 6 | 0.25d | 2011-04-29 08:00 | 2011-04-29 10:00 | 2004-06-18 08:00 | 2004-06-18 10:00 | 0.25d | 26.94d | start no earlier than 2011-04-29 08:00 | 项目经理 | 2h | 2 | 2 |  |  |
| 141 | 1.8.5.7 | 项目问题和风险管理 7 | 0.25d | 2011-05-06 08:00 | 2011-05-06 10:00 | 2004-06-25 08:00 | 2004-06-25 10:00 | 0.25d | 21.94d | start no earlier than 2011-05-06 08:00 | 项目经理 | 2h | 2 | 2 |  |  |
| 142 | 1.8.5.8 | 项目问题和风险管理 8 | 0.25d | 2011-05-13 08:00 | 2011-05-13 10:00 | 2004-07-02 08:00 | 2004-07-02 10:00 | 0.25d | 16.94d | start no earlier than 2011-05-13 08:00 | 项目经理 | 2h | 2 | 2 |  |  |
| 143 | 1.8.5.9 | 项目问题和风险管理 9 | 0.25d | 2011-05-20 08:00 | 2011-05-20 10:00 | 2004-07-09 08:00 | 2004-07-09 10:00 | 0.25d | 11.94d | start no earlier than 2011-05-20 08:00 | 项目经理 | 2h | 2 | 2 |  |  |

| ID | WBS | Task | Duration | Start | Finish | Predecessors | Baseline start | Baseline finish | Baseline duration | Total slack | Free slack | Constraint | Resources | Work | Cost | Baseline cost | Text21 | Text8 |
| --- | --- | --- | --- | --- | --- | --- | --- | --- | --- | --- | --- | --- | --- | --- | --- | --- | --- | --- |
| 144 | 1.8.6 | **产品批准** | 43.04d | 2011-03-16 10:00 | 2011-05-16 10:21 |  | 2004-05-13 15:00 | 2004-07-21 09:00 | 48.38d | 15.9d |  |  |  | 6h | 6 | 11 | 产品审批表 |  |
| 145 | 1.8.6.1 | 客户需求书批准 | 0.12d | 2011-03-16 10:00 | 2011-03-16 11:00 | 29 | 2004-05-13 15:00 | 2004-05-13 16:00 | 0.12d | 58.82d |  | start no earlier than 2008-04-16 08:00 | SM | 1h | 1 | 1 |  | 可能多次 |
| 146 | 1.8.6.2 | 软件需求规格说明书批准 | 0.12d | 2011-03-30 09:21 | 2011-03-30 10:21 | 32 | 2004-05-27 14:21 | 2004-05-27 15:21 | 0.12d | 47.52d | 0d | start no earlier than 2008-04-23 08:00 | CCB | 1h | 1 | 1 |  | 可能多次 |
| 147 | 1.8.6.3 | 项目计划书批准 | 0.12d | 2011-05-16 09:21 | 2011-05-16 10:21 | 27 | 2004-07-13 14:21 | 2004-07-13 15:21 | 0.12d | 14.65d | 0d | start no earlier than 2008-04-30 08:00 | SM | 1h | 1 | 1 |  | 可能多次 |
| 148 | 1.8.6.4 | 概要设计说明书批准 | 0.12d | 2011-04-01 09:56 | 2011-04-01 10:56 | 45 | 2004-05-31 14:56 | 2004-05-31 15:56 | 0.12d | 45.57d | 0d | start no earlier than 2008-05-07 08:00 | 项目经理 | 1h | 1 | 1 |  | 可能多次 |
| 149 | 1.8.6.5 | 详细设计说明书批准 | 0.12d | 2011-04-18 15:00 | 2011-04-18 16:00 | 52 | 2004-06-18 10:00 | 2004-06-18 11:00 | 0.12d | 32.82d | 0d | start no earlier than 2008-05-14 08:00 | 项目经理 | 1h | 1 | 1 |  | 可能多次 |
| 150 | 1.8.6.6 | 用户操作手册批准 | 0.12d | 2011-05-10 14:31 | 2011-05-10 15:31 | 73 | 2004-07-12 09:31 | 2004-07-12 10:31 | 0.12d | 19.38d |  | start no earlier than 2008-05-21 08:00 | CCB | 1h | 1 | 1 |  | 可能多次 |
| 151 | 1.8.7 | 组间协调 | 0.61d? | 2011-05-05 08:00 | 2011-05-05 17:00 |  | 2004-07-01 11:05 | 2004-07-13 16:20 | 1d? | 22.19d |  | start no earlier than 2011-05-05 08:00 | 项目经理 [162.8%] | 8h | 8 | 8 |  |  |
| 152 | 1.9 | **质量保证任务** | 40.7d? | 2011-03-30 10:21 | 2011-05-25 17:00 |  | 2004-05-11 08:00 | 2004-08-10 15:11 | 65.77d? | 8.19d |  |  |  | 65h | 66 | 82 |  |  |
| 153 | 1.9.1 | 质量保证活动培训 | 0.5d? | 2011-05-12 08:00 | 2011-05-12 12:00 |  | 2004-05-11 08:00 | 2004-05-11 12:00 | 0.5d? | 17.69d |  | start no earlier than 2011-05-12 08:00 | SQA | 4h | 4 | 4 | 培训记录 |  |
| 154 | 1.9.2 | **SQA过程评审** | 33.25d? | 2011-03-30 10:21 | 2011-05-16 13:21 |  | 2004-05-27 15:21 | 2004-08-09 15:11 | 51.98d? | 14.65d | 0d |  |  | 18h | 19 | 19 |  |  |
| 155 | 1.9.2.1 | 需求管理过程评审 | 0.25d? | 2011-03-30 10:21 | 2011-03-30 13:21 | 146 | 2004-05-27 15:21 | 2004-05-28 08:21 | 0.25d? | 47.65d |  |  | SQA | 2h | 2 | 2 | 过程评审报告 | 可能多次 |
| 156 | 1.9.2.2 | 项目策划过程评审 | 0.25d? | 2011-05-16 10:21 | 2011-05-16 13:21 | 147 | 2004-07-13 15:21 | 2004-07-14 08:21 | 0.25d? | 14.65d |  |  | SQA | 2h | 2 | 2 | 过程评审报告 |  |
| 157 | 1.9.2.3 | 项目跟踪与监控过程评审 | 0.25d? | 2011-04-18 16:00 | 2011-04-19 09:00 | 149 | 2004-06-18 11:00 | 2004-06-18 14:00 | 0.25d? | 32.82d | 0d |  | SQA | 2h | 2 | 2 | 过程评审报告 | 可能多次 |
| 158 | 1.9.2.4 | 项目配置管理过程评审 | 0.25d? | 2011-04-19 09:00 | 2011-04-19 11:00 | 157 | 2004-06-18 14:00 | 2004-06-18 16:00 | 0.25d? | 32.82d | 0d |  | SQA | 2h | 2 | 2 | 过程评审报告 | 可能多次 |
| 159 | 1.9.2.5 | 项目培训过程评审 | 0.25d? | 2011-04-19 11:00 | 2011-04-19 14:00 | 158 | 2004-06-18 16:00 | 2004-06-21 09:00 | 0.25d? | 32.82d | 0d |  | SQA | 2h | 2 | 2 | 过程评审报告 | 可能多次 |
| 160 | 1.9.2.6 | 项目软件产品工程评审 | 0.25d? | 2011-04-19 14:00 | 2011-04-19 16:00 | 159 | 2004-06-21 09:00 | 2004-06-21 11:00 | 0.25d? | 32.82d | 0d |  | SQA | 2h | 2 | 2 | 过程评审报告 | 可能多次 |
| 161 | 1.9.2.7 | 同行评审过程评审 | 0.25d? | 2011-04-19 16:00 | 2011-04-20 09:00 | 160 | 2004-06-21 11:00 | 2004-06-21 14:00 | 0.25d? | 32.82d | 0d |  | SQA | 2h | 2 | 2 | 过程评审报告 | 可能多次 |
| 162 | 1.9.2.8 | 组间协调过程评审 | 0.25d? | 2011-04-20 09:00 | 2011-04-20 11:00 | 161 | 2004-06-21 14:00 | 2004-06-21 16:00 | 0.25d? | 32.82d |  |  | SQA | 2h | 2 | 2 | 过程评审报告 | 可能多次 |
| 163 | 1.9.2.9 | 外部专家对SQA的评审 | 0.25d? | 2011-05-16 08:00 | 2011-05-16 10:00 |  | 2004-08-09 13:11 | 2004-08-09 15:11 | 0.25d? | 14.94d |  | start no earlier than 2011-05-16 08:00 | 外部专家 | 2h | 3 | 3 | 对SQA的评审报告 |  |
| 164 | 1.9.3 | SQA过程问题跟踪 | 1d? | 2011-05-16 13:21 | 2011-05-17 13:21 | 154 | 2004-08-09 15:11 | 2004-08-10 15:11 | 1d? | 14.65d |  |  | SQA [50%] | 4h | 4 | 4 |  |  |
| 165 | 1.9.4 | **SQA产品审计** | 31.2d? | 2011-03-30 10:21 | 2011-05-12 12:00 |  | 2004-05-27 15:21 | 2004-07-12 15:31 | 32.02d? | 16.69d | 0d |  |  | 9h | 9 | 9 |  |  |
| 166 | 1.9.4.1 | 软件需求规格说明书产品审计 | 0.38d? | 2011-03-30 10:21 | 2011-03-30 14:21 | 146 | 2004-05-27 15:21 | 2004-05-28 09:21 | 0.38d? | 47.52d |  |  | SQA | 3h | 3 | 3 | 产品审计报告 |  |
| 167 | 1.9.4.2 | 概要设计说明书产品审计 | 0.25d? | 2011-04-01 10:56 | 2011-04-01 13:56 | 148 | 2004-05-31 15:56 | 2004-06-01 08:56 | 0.25d? | 45.57d |  |  | SQA | 2h | 2 | 2 | 产品审计报告 |  |
| 168 | 1.9.4.3 | 用户文档产品审计 | 0.5d? | 2011-05-12 08:00 | 2011-05-12 12:00 |  | 2004-07-12 10:31 | 2004-07-12 15:31 | 0.5d? | 16.69d |  | start no earlier than 2011-05-12 08:00 | SQA | 4h | 4 | 4 | 产品审计报告 |  |
| 169 | 1.9.5 | SQA产品审计问题跟踪 | 1d? | 2011-05-12 13:00 | 2011-05-13 12:00 | 165 | 2004-07-12 15:31 | 2004-07-13 15:31 | 1d? | 16.69d |  |  | SQA [25%] | 2h | 2 | 2 |  |  |

| ID | WBS | Task | Duration | Start | Finish | Predecessors | Baseline start | Baseline finish | Baseline duration | Total slack | Free slack | Constraint | Resources | Work | Cost | Baseline cost | Text21 | Text29 | Text8 |
| --- | --- | --- | --- | --- | --- | --- | --- | --- | --- | --- | --- | --- | --- | --- | --- | --- | --- | --- | --- |
| 170 | 1.9.6 | **SQA项目支持任务** | 31d | 2011-04-13 08:00 | 2011-05-25 17:00 |  | 2004-05-12 08:00 | 2004-07-21 17:00 | 51d | 8.19d |  |  |  | 28h | 28 | 44 |  |  |  |
| 171 | 1.9.6.1 | SQA项目支持任务 1 | 1d | 2011-04-13 08:00 | 2011-04-13 17:00 |  | 2004-05-12 08:00 | 2004-05-12 17:00 | 1d | 38.19d |  | start no earlier than 2011-04-13 08:00 | SQA [50%] | 4h | 4 | 4 |  |  |  |
| 172 | 1.9.6.2 | SQA项目支持任务 2 | 1d | 2011-04-20 08:00 | 2011-04-20 17:00 |  | 2004-05-19 08:00 | 2004-05-19 17:00 | 1d | 33.19d |  | start no earlier than 2011-04-20 08:00 | SQA [50%] | 4h | 4 | 4 |  |  |  |
| 173 | 1.9.6.3 | SQA项目支持任务 3 | 1d | 2011-04-27 08:00 | 2011-04-27 17:00 |  | 2004-05-26 08:00 | 2004-05-26 17:00 | 1d | 28.19d |  | start no earlier than 2011-04-27 08:00 | SQA [50%] | 4h | 4 | 4 |  |  |  |
| 174 | 1.9.6.4 | SQA项目支持任务 4 | 1d | 2011-05-04 08:00 | 2011-05-04 17:00 |  | 2004-06-02 08:00 | 2004-06-02 17:00 | 1d | 23.19d |  | start no earlier than 2011-05-04 08:00 | SQA [50%] | 4h | 4 | 4 |  |  |  |
| 175 | 1.9.6.5 | SQA项目支持任务 5 | 1d | 2011-05-11 08:00 | 2011-05-11 17:00 |  | 2004-06-09 08:00 | 2004-06-09 17:00 | 1d | 18.19d |  | start no earlier than 2011-05-11 08:00 | SQA [50%] | 4h | 4 | 4 |  |  |  |
| 176 | 1.9.6.6 | SQA项目支持任务 6 | 1d | 2011-05-18 08:00 | 2011-05-18 17:00 |  | 2004-06-16 08:00 | 2004-06-16 17:00 | 1d | 13.19d |  | start no earlier than 2011-05-18 08:00 | SQA [50%] | 4h | 4 | 4 |  |  |  |
| 177 | 1.9.6.7 | SQA项目支持任务 7 | 1d | 2011-05-25 08:00 | 2011-05-25 17:00 |  | 2004-06-23 08:00 | 2004-06-23 17:00 | 1d | 8.19d |  | start no earlier than 2011-05-25 08:00 | SQA [50%] | 4h | 4 | 4 |  |  |  |
| 178 | 1.10 | **配置管理任务** | 62d? | 2011-03-10 08:00 | 2011-06-03 17:00 |  | 2004-05-11 13:00 | 2004-08-09 14:31 | 64.19d? | 1.19d |  |  |  | 75h | 75 | 64 |  |  |  |
| 179 | 1.10.1 | 配置管理活动培训 | 1d? | 2011-05-12 08:00 | 2011-05-12 17:00 |  | 2004-05-11 13:00 | 2004-05-12 12:00 | 1d? | 17.19d |  | start no earlier than 2011-05-12 08:00 | SCM [50%] | 4h | 4 | 4 | 培训记录 |  |  |
| 180 | 1.10.2 | 配置库建立 | 0.5d? | 2011-06-03 08:00 | 2011-06-03 12:00 | 181 | 2004-07-13 15:21 | 2004-07-14 10:21 | 0.5d? | 1.69d |  |  | SCM [50%] | 2h | 2 | 2 | 项目配置库 | ܁! |  |
| 181 | 1.10.3 | **配置项状态记录和发布** | 61d | 2011-03-10 08:00 | 2011-06-02 17:00 |  | 2004-05-13 08:00 | 2004-07-15 16:41 | 45.96d | 1.69d | 0d |  |  | 10h | 10 | 10 |  |  |  |
| 182 | 1.10.3.1 | 配置项状态记录和发布 1 | 1d | 2011-03-10 08:00 | 2011-03-10 17:00 |  | 2004-05-13 08:00 | 2004-05-13 17:00 | 1d | 61.69d |  | start no earlier than 2011-03-10 08:00 | SCM [12.5%] | 1h | 1 | 1 |  | ܁! |  |
| 183 | 1.10.3.2 | 配置项状态记录和发布 2 | 0.96d | 2011-03-17 08:00 | 2011-03-17 16:41 |  | 2004-05-20 08:00 | 2004-05-20 16:41 | 0.96d | 56.73d |  | start no earlier than 2011-03-17 08:00 | SCM [13%] | 1h | 1 | 1 |  | ܁! |  |
| 184 | 1.10.3.3 | 配置项状态记录和发布 3 | 0.96d | 2011-03-24 08:00 | 2011-03-24 16:41 |  | 2004-05-27 08:00 | 2004-05-27 16:41 | 0.96d | 51.73d |  | start no earlier than 2011-03-24 08:00 | SCM [13%] | 1h | 1 | 1 |  | ܁! |  |
| 185 | 1.10.3.4 | 配置项状态记录和发布 4 | 0.96d | 2011-03-31 08:00 | 2011-03-31 16:41 |  | 2004-06-03 08:00 | 2004-06-03 16:41 | 0.96d | 46.73d |  | start no earlier than 2011-03-31 08:00 | SCM [13%] | 1h | 1 | 1 |  | ܁! |  |
| 186 | 1.10.3.5 | 配置项状态记录和发布 5 | 0.96d | 2011-04-07 08:00 | 2011-04-07 16:41 |  | 2004-06-10 08:00 | 2004-06-10 16:41 | 0.96d | 41.73d |  | start no earlier than 2011-04-07 08:00 | SCM [13%] | 1h | 1 | 1 |  | ܁! |  |
| 187 | 1.10.3.6 | 配置项状态记录和发布 6 | 0.96d | 2011-04-14 08:00 | 2011-04-14 16:41 |  | 2004-06-17 08:00 | 2004-06-17 16:41 | 0.96d | 36.73d |  | start no earlier than 2011-04-14 08:00 | SCM [13%] | 1h | 1 | 1 |  | ܁! |  |
| 188 | 1.10.3.7 | 配置项状态记录和发布 7 | 0.96d | 2011-04-21 08:00 | 2011-04-21 16:41 |  | 2004-06-24 08:00 | 2004-06-24 16:41 | 0.96d | 31.73d |  | start no earlier than 2011-04-21 08:00 | SCM [13%] | 1h | 1 | 1 |  | ܁! |  |
| 189 | 1.10.3.8 | 配置项状态记录和发布 8 | 0.96d | 2011-04-28 08:00 | 2011-04-28 16:41 |  | 2004-07-01 08:00 | 2004-07-01 16:41 | 0.96d | 26.73d |  | start no earlier than 2011-04-28 08:00 | SCM [13%] | 1h | 1 | 1 |  | ܁! |  |
| 190 | 1.10.3.9 | 配置项状态记录和发布 9 | 0.96d | 2011-05-05 08:00 | 2011-05-05 16:41 |  | 2004-07-08 08:00 | 2004-07-08 16:41 | 0.96d | 21.73d |  | start no earlier than 2011-05-05 08:00 | SCM [13%] | 1h | 1 | 1 |  | ܁! |  |
| 191 | 1.10.3.10 | 配置项状态记录和发布 10 | 0.96d | 2011-05-12 08:00 | 2011-05-12 16:41 |  | 2004-07-15 08:00 | 2004-07-15 16:41 | 0.96d | 16.73d |  | start no earlier than 2011-05-12 08:00 | SCM [13%] | 1h | 1 | 1 |  | ܁! |  |
| 192 | 1.10.3.11 | 配置项状态记录和发布 11 | 1d | 2011-05-19 08:00 | 2011-05-19 17:00 |  |  |  |  | 11.69d |  | start no earlier than 2011-05-19 08:00 |  |  |  |  |  |  |  |
| 193 | 1.10.3.12 | 配置项状态记录和发布 12 | 1d | 2011-05-26 08:00 | 2011-05-26 17:00 |  |  |  |  | 6.69d |  | start no earlier than 2011-05-26 08:00 |  |  |  |  |  |  |  |
| 194 | 1.10.3.13 | 配置项状态记录和发布 13 | 1d | 2011-06-02 08:00 | 2011-06-02 17:00 |  |  |  |  | 1.69d |  | start no earlier than 2011-06-02 08:00 |  |  |  |  |  |  |  |
| 195 | 1.10.4 | 配置物理审计 | 1d? | 2011-03-14 08:00 | 2011-03-14 17:00 |  | 2004-06-14 15:36 | 2004-06-15 15:36 | 1d? | 49d | 20.11d | start no earlier than 2011-03-14 08:00 | SCM [50%] | 4h | 4 | 4 | 审计报告 | ܁! | 每个项目至少2次 |
| 196 | 1.10.5 | 配置功能审计 | 1d? | 2011-04-11 08:00 | 2011-04-11 17:00 |  | 2004-06-14 15:36 | 2004-06-15 15:36 | 1d? | 29d | 0.11d | start no earlier than 2011-04-11 08:00 | SCM [50%] | 4h | 4 | 4 | 审计报告 | ܁! | 每个项目至少2次 |
| 197 | 1.10.6 | 配置审计问题跟踪 | 1d? | 2011-04-15 08:00 | 2011-04-28 16:41 | 195, 196 | 2004-06-18 14:41 | 2004-07-02 14:23 | 1d? | 27.23d |  |  | 项目经理 [25%] | 2h | 2 | 2 |  | ܁! |  |

| ID | WBS | Task | Duration | Start | Finish | Baseline start | Baseline finish | Baseline duration | Total slack | Constraint | Resources | Work | Cost | Baseline cost | Text21 | Text29 |
| --- | --- | --- | --- | --- | --- | --- | --- | --- | --- | --- | --- | --- | --- | --- | --- | --- |
| 198 | 1.10.7 | **配置变更控制** | 61d | 2011-03-10 08:00 | 2011-06-02 17:00 | 2004-05-13 08:00 | 2004-07-22 17:00 | 51d | 2.19d |  |  | 22h | 22 | 22 | 变更申请表和配置项变更表，配置状态记录 |  |
| 199 | 1.10.7.1 | 配置变更控制 1 | 1d | 2011-03-10 08:00 | 2011-03-10 17:00 | 2004-05-13 08:00 | 2004-05-13 17:00 | 1d | 62.19d | start no earlier than 2011-03-10 08:00 | SCM [25%] | 2h | 2 | 2 |  | ܁! |
| 200 | 1.10.7.2 | 配置变更控制 2 | 1d | 2011-03-17 08:00 | 2011-03-17 17:00 | 2004-05-20 08:00 | 2004-05-20 17:00 | 1d | 57.19d | start no earlier than 2011-03-17 08:00 | SCM [25%] | 2h | 2 | 2 |  | ܁! |
| 201 | 1.10.7.3 | 配置变更控制 3 | 1d | 2011-03-24 08:00 | 2011-03-24 17:00 | 2004-05-27 08:00 | 2004-05-27 17:00 | 1d | 52.19d | start no earlier than 2011-03-24 08:00 | SCM [25%] | 2h | 2 | 2 |  | ܁! |
| 202 | 1.10.7.4 | 配置变更控制 4 | 1d | 2011-03-31 08:00 | 2011-03-31 17:00 | 2004-06-03 08:00 | 2004-06-03 17:00 | 1d | 47.19d | start no earlier than 2011-03-31 08:00 | SCM [25%] | 2h | 2 | 2 |  | ܁! |
| 203 | 1.10.7.5 | 配置变更控制 5 | 1d | 2011-04-07 08:00 | 2011-04-07 17:00 | 2004-06-10 08:00 | 2004-06-10 17:00 | 1d | 42.19d | start no earlier than 2011-04-07 08:00 | SCM [25%] | 2h | 2 | 2 |  | ܁! |
| 204 | 1.10.7.6 | 配置变更控制 6 | 1d | 2011-04-14 08:00 | 2011-04-14 17:00 | 2004-06-17 08:00 | 2004-06-17 17:00 | 1d | 37.19d | start no earlier than 2011-04-14 08:00 | SCM [25%] | 2h | 2 | 2 |  | ܁! |
| 205 | 1.10.7.7 | 配置变更控制 7 | 1d | 2011-04-21 08:00 | 2011-04-21 17:00 | 2004-06-24 08:00 | 2004-06-24 17:00 | 1d | 32.19d | start no earlier than 2011-04-21 08:00 | SCM [25%] | 2h | 2 | 2 |  | ܁! |
| 206 | 1.10.7.8 | 配置变更控制 8 | 1d | 2011-04-28 08:00 | 2011-04-28 17:00 | 2004-07-01 08:00 | 2004-07-01 17:00 | 1d | 27.19d | start no earlier than 2011-04-28 08:00 | SCM [25%] | 2h | 2 | 2 |  | ܁! |
| 207 | 1.10.7.9 | 配置变更控制 9 | 1d | 2011-05-05 08:00 | 2011-05-05 17:00 | 2004-07-08 08:00 | 2004-07-08 17:00 | 1d | 22.19d | start no earlier than 2011-05-05 08:00 | SCM [25%] | 2h | 2 | 2 |  | ܁! |
| 208 | 1.10.7.10 | 配置变更控制 10 | 1d | 2011-05-12 08:00 | 2011-05-12 17:00 | 2004-07-15 08:00 | 2004-07-15 17:00 | 1d | 17.19d | start no earlier than 2011-05-12 08:00 | SCM [25%] | 2h | 2 | 2 |  | ܁! |
| 209 | 1.10.7.11 | 配置变更控制 11 | 1d | 2011-05-19 08:00 | 2011-05-19 17:00 | 2004-07-22 08:00 | 2004-07-22 17:00 | 1d | 12.19d | start no earlier than 2011-05-19 08:00 | SCM [25%] | 2h | 2 | 2 |  | ܁! |
| 210 | 1.10.7.12 | 配置变更控制 12 | 1d | 2011-05-26 08:00 | 2011-05-26 17:00 |  |  |  | 7.19d | start no earlier than 2011-05-26 08:00 |  |  |  |  |  |  |
| 211 | 1.10.7.13 | 配置变更控制 13 | 1d | 2011-06-02 08:00 | 2011-06-02 17:00 |  |  |  | 2.19d | start no earlier than 2011-06-02 08:00 |  |  |  |  |  |  |
| 212 | 1.10.8 | 产品构造及发布1 | 15d? | 2011-04-04 08:00 | 2011-04-22 17:00 | 2004-06-22 15:36 | 2004-06-24 15:36 | 2d? | 31.19d | finish no earlier than 2011-04-22 17:00 | SCM [0.8%] | 4h | 4 | 4 | 软件产品和产品发布报告 | ܁! |
| 213 | 1.10.9 | 产品构造及发布2 | 2d? | 2011-05-02 08:00 | 2011-05-03 17:00 | 2004-07-22 11:31 | 2004-07-26 11:31 | 2d? | 24.19d | start no earlier than 2011-05-02 08:00 | SCM [25%] | 4h | 4 | 4 | 软件产品和产品发布报告 | ܁! |
| 214 | 1.10.10 | 产品构造及发布3 | 1d? | 2011-06-03 08:00 | 2011-06-03 17:00 | 2004-08-03 14:31 | 2004-08-09 14:31 | 4d? | 1.19d | finish no earlier than 2011-06-03 17:00 | SCM [25%] | 8h | 8 | 8 | 软件产品和产品发布报告 | ܁! |
| 215 | 1.10.11 | **配置库备份** | 61d | 2011-03-11 08:00 | 2011-06-03 17:00 | 2004-05-14 08:00 | 2004-07-23 17:00 | 51d | 1.19d |  |  | 11h | 11 |  |  |  |
| 216 | 1.10.11.1 | 配置库备份 1 | 1d | 2011-03-11 08:00 | 2011-03-11 17:00 | 2004-05-14 08:00 | 2004-05-14 17:00 | 1d | 61.19d | start no earlier than 2011-03-11 08:00 | SCM [12.5%] | 1h | 1 |  |  | ܁! |
| 217 | 1.10.11.2 | 配置库备份 2 | 0.96d | 2011-03-18 08:00 | 2011-03-18 16:41 | 2004-05-21 08:00 | 2004-05-21 17:00 | 1d | 56.23d | start no earlier than 2011-03-18 08:00 | SCM [13%] | 1h | 1 |  |  | ܁! |
| 218 | 1.10.11.3 | 配置库备份 3 | 0.96d | 2011-03-25 08:00 | 2011-03-25 16:41 | 2004-05-28 08:00 | 2004-05-28 17:00 | 1d | 51.23d | start no earlier than 2011-03-25 08:00 | SCM [13%] | 1h | 1 |  |  | ܁! |
| 219 | 1.10.11.4 | 配置库备份 4 | 0.96d | 2011-04-01 08:00 | 2011-04-01 16:41 | 2004-06-04 08:00 | 2004-06-04 17:00 | 1d | 46.23d | start no earlier than 2011-04-01 08:00 | SCM [13%] | 1h | 1 |  |  | ܁! |
| 220 | 1.10.11.5 | 配置库备份 5 | 0.96d | 2011-04-08 08:00 | 2011-04-08 16:41 | 2004-06-11 08:00 | 2004-06-11 17:00 | 1d | 41.23d | start no earlier than 2011-04-08 08:00 | SCM [13%] | 1h | 1 |  |  | ܁! |
| 221 | 1.10.11.6 | 配置库备份 6 | 0.96d | 2011-04-15 08:00 | 2011-04-15 16:41 | 2004-06-18 08:00 | 2004-06-18 17:00 | 1d | 36.23d | start no earlier than 2011-04-15 08:00 | SCM [13%] | 1h | 1 |  |  | ܁! |
| 222 | 1.10.11.7 | 配置库备份 7 | 0.96d | 2011-04-22 08:00 | 2011-04-22 16:41 | 2004-06-25 08:00 | 2004-06-25 17:00 | 1d | 31.23d | start no earlier than 2011-04-22 08:00 | SCM [13%] | 1h | 1 |  |  | ܁! |
| 223 | 1.10.11.8 | 配置库备份 8 | 0.96d | 2011-04-29 08:00 | 2011-04-29 16:41 | 2004-07-02 08:00 | 2004-07-02 17:00 | 1d | 26.23d | start no earlier than 2011-04-29 08:00 | SCM [13%] | 1h | 1 |  |  | ܁! |
| 224 | 1.10.11.9 | 配置库备份 9 | 0.96d | 2011-05-06 08:00 | 2011-05-06 16:41 | 2004-07-09 08:00 | 2004-07-09 17:00 | 1d | 21.23d | start no earlier than 2011-05-06 08:00 | SCM [13%] | 1h | 1 |  |  | ܁! |
| 225 | 1.10.11.10 | 配置库备份 10 | 0.96d | 2011-05-13 08:00 | 2011-05-13 16:41 | 2004-07-16 08:00 | 2004-07-16 17:00 | 1d | 16.23d | start no earlier than 2011-05-13 08:00 | SCM [13%] | 1h | 1 |  |  | ܁! |
| 226 | 1.10.11.11 | 配置库备份 11 | 0.96d | 2011-05-20 08:00 | 2011-05-20 16:41 | 2004-07-23 08:00 | 2004-07-23 17:00 | 1d | 11.23d | start no earlier than 2011-05-20 08:00 | SCM [13%] | 1h | 1 |  |  | ܁! |
| 227 | 1.10.11.12 | 配置库备份 12 | 1d | 2011-05-27 08:00 | 2011-05-27 17:00 |  |  |  | 6.19d | start no earlier than 2011-05-27 08:00 |  |  |  |  |  |  |
| 228 | 1.10.11.13 | 配置库备份 13 | 1d | 2011-06-03 08:00 | 2011-06-03 17:00 |  |  |  | 1.19d | start no earlier than 2011-06-03 08:00 |  |  |  |  |  |  |
